Schedule from MS Project, 2018-03-10 to 2018-04-25, 4 hours a day, costs in $, A marks actual dates.

## Calendars

- Standard: Mon 17:00-23:00; Tue-Sat 17:00-21:00; Sun off.

## Resources

| Resource | Rate |
| --- | --- |
| Gerardo | 400 |
| David | 400 |
| Eduardo | 400 |
| Chung | 400 |
| Material Miógrafo | 635 |
| Material HW de instrumentación de miografo | 635 |

## Schedule

| ID | WBS | Task | Type | Duration | Start | Finish | Predecessors | Complete | Remaining | Baseline 1 start | Baseline 1 finish | Total slack | Free slack | Constraint | Resources | Work | Actual work | Cost | Actual cost |
| --- | --- | --- | --- | --- | --- | --- | --- | --- | --- | --- | --- | --- | --- | --- | --- | --- | --- | --- | --- |
| 1 | 1 | **Proyecto Final** |  | 42.5d? | 2018-03-10 17:00 A | 2018-04-25 17:00 |  | 19% | 34.31d? | 2018-03-10 17:00 | 2018-04-25 17:00 | 0d |  |  |  | 222.08h | 42.78h | 90,102 | 17,239 |
| 2 | 1.1 | **Kick Off meeting** |  | 0.99d | 2018-03-10 17:00 A | 2018-03-10 20:57 A |  | 100% |  | 2018-03-10 17:00 | 2018-03-10 20:57 |  |  |  |  | 11.88h | 11.88h | 4,752 | 4,752 |
| 3 | 1.1.1 | Definición del alcance del proyecto |  | 0.11d | 2018-03-10 17:00 A | 2018-03-10 17:26 A |  | 100% |  | 2018-03-10 17:00 | 2018-03-10 17:26 |  |  |  | David; Gerardo; Chung | 1.32h | 1.32h | 528 | 528 |
| 4 | 1.1.2 | Primer borrador del background y objetivo del proyecto |  | 0.11d | 2018-03-10 17:26 A | 2018-03-10 17:52 A | 3 | 100% |  | 2018-03-10 17:26 | 2018-03-10 17:52 |  |  |  | David; Gerardo; Chung | 1.32h | 1.32h | 528 | 528 |
| 5 | 1.1.3 | Primer diseño a nivel sistema del proyecto |  | 0.11d | 2018-03-10 17:52 A | 2018-03-10 18:19 A | 4 | 100% |  | 2018-03-10 17:52 | 2018-03-10 18:19 |  |  |  | David; Gerardo; Chung | 1.32h | 1.32h | 528 | 528 |
| 6 | 1.1.4 | Definición de riesgos |  | 0.11d | 2018-03-10 18:19 A | 2018-03-10 18:45 A | 5 | 100% |  | 2018-03-10 18:19 | 2018-03-10 18:45 |  |  |  | David; Gerardo; Chung | 1.32h | 1.32h | 528 | 528 |
| 7 | 1.1.5 | Definición de competencias |  | 0.11d | 2018-03-10 18:45 A | 2018-03-10 19:12 A | 6 | 100% |  | 2018-03-10 18:45 | 2018-03-10 19:12 |  |  |  | David; Gerardo; Chung | 1.32h | 1.32h | 528 | 528 |
| 8 | 1.1.6 | Definición del tooling |  | 0.11d | 2018-03-10 19:12 A | 2018-03-10 19:38 A | 7 | 100% |  | 2018-03-10 19:12 | 2018-03-10 19:38 |  |  |  | David; Gerardo; Chung | 1.32h | 1.32h | 528 | 528 |
| 9 | 1.1.7 | Definición del WBS |  | 0.11d | 2018-03-10 19:38 A | 2018-03-10 20:04 A | 8 | 100% |  | 2018-03-10 19:38 | 2018-03-10 20:04 |  |  |  | David; Gerardo; Chung | 1.32h | 1.32h | 528 | 528 |
| 10 | 1.1.8 | Definición de materiales |  | 0.11d | 2018-03-10 20:04 A | 2018-03-10 20:31 A | 9 | 100% |  | 2018-03-10 20:04 | 2018-03-10 20:31 |  |  |  | David; Gerardo; Chung | 1.32h | 1.32h | 528 | 528 |
| 11 | 1.1.9 | Definición de Días laborales y horas que lo componen |  | 0.11d | 2018-03-10 20:31 A | 2018-03-10 20:57 A | 10 | 100% |  | 2018-03-10 20:31 | 2018-03-10 20:57 |  |  |  | David; Gerardo; Chung | 1.32h | 1.32h | 528 | 528 |
| 12 | 1.2 | **Documentación de la kick off meeting** |  | 3.12d | 2018-03-12 17:00 A | 2018-03-14 19:30 | 2 | 69% | 0.96d | 2018-03-13 17:00 | 2018-03-15 17:00 | 38.38d |  |  |  | 6.5h | 4.5h | 2,600 | 1,800 |
| 13 | 1.2.1 | BOM Documentación |  | 1h | 2018-03-13 17:00 A | 2018-03-13 18:00 A |  | 100% |  | 2018-03-13 17:00 | 2018-03-13 18:00 |  |  | start no earlier than 2018-03-13 17:00 | David | 1h | 1h | 400 | 400 |
| 14 | 1.2.2 | Creación de Project Charter 1st Draft |  | 1.5h | 2018-03-13 18:00 A | 2018-03-13 19:30 | 13 | 20% | 1.2h | 2018-03-13 18:00 | 2018-03-13 19:30 | 0.3d | 0d |  | David | 1.5h | 0.3h | 600 | 120 |
| 15 | 1.2.3 | Project Plan 1st Draft |  | 2h | 2018-03-13 19:30 A | 2018-03-14 17:30 | 14 | 60% | 0.8h | 2018-03-13 19:30 | 2018-03-14 17:30 | 38.88d |  |  | David | 2h | 1.2h | 800 | 480 |
| 16 | 1.2.4 | Creación del planing |  | 2h | 2018-03-14 17:30 A | 2018-03-14 19:30 A | 15 | 100% |  | 2018-03-14 17:30 | 2018-03-14 19:30 |  |  | start no earlier than 2018-03-13 17:00 | David | 2h | 2h | 800 | 800 |
| 17 | 1.2.5 | Inicio del Desarrollo | milestone | 0d | 2018-03-12 17:00 A | 2018-03-12 17:00 A |  | 100% |  | 2018-03-15 17:00 | 2018-03-15 17:00 |  |  | start no earlier than 2018-03-15 17:00 |  |  |  |  |  |
| 18 | 1.3 | Documentación del Proyecto management |  | 12h | 2018-03-15 17:00 A | 2018-03-17 21:00 | 17, 13 | 20% | 9.6h | 2018-03-15 17:00 | 2018-03-17 21:00 | 35d |  |  | David | 12h | 2.4h | 4,800 | 960 |
| 19 | 1.4 | **DEM1R: Primer entregable Demo** |  | 12.38d? | 2018-03-10 17:00 A | 2018-03-23 18:30 | 17 | 34% | 8.16d? | 2018-03-12 17:00 | 2018-03-28 18:30 | 30.12d |  |  |  | 79.7h | 24h | 33,150 | 9,727 |
| 20 | 1.4.1 | Escritura de requerimientos de Sistema 1er Entregable |  | 1h | 2018-03-19 17:00 A | 2018-03-19 18:00 A | 17, 13, 18 | 100% |  | 2018-03-19 17:00 | 2018-03-19 18:00 |  |  |  | David | 1h | 1h | 400 | 400 |
| 21 | 1.4.2 | **HW** |  | 9.38d | 2018-03-12 17:00 A | 2018-03-21 18:30 |  | 28% | 6.75d | 2018-03-15 17:00 | 2018-03-26 20:30 | 32.12d |  |  |  | 54.7h | 15h | 23,150 | 6,127 |
| 22 | 1.4.2.1 | **Diseño HW del Miógrafo 1er iteración** |  | 1.25d | 2018-03-12 21:00 A | 2018-03-13 20:00 |  | 60% | 0.5d | 2018-03-15 17:00 | 2018-03-17 20:00 | 38.5d |  |  |  | 5h | 3h | 2,000 | 1,200 |
| 23 | 1.4.2.1.1 | Diseño del circuito |  | 1h | 2018-03-12 21:00 A | 2018-03-12 22:00 A | 17, 50 | 100% |  | 2018-03-15 17:00 | 2018-03-15 20:00 |  |  |  | Chung | 1h | 1h | 400 | 400 |
| 24 | 1.4.2.1.2 | Dibujo del esquemático en Eagle |  | 2h | 2018-03-12 22:00 A | 2018-03-13 18:00 A | 23 | 100% |  | 2018-03-15 20:00 | 2018-03-16 18:00 |  |  |  | Chung | 2h | 2h | 800 | 800 |
| 25 | 1.4.2.1.3 | Construcción circuito en Proto |  | 1h | 2018-03-13 18:00 | 2018-03-13 19:00 | 24 |  |  | 2018-03-16 18:00 | 2018-03-16 20:00 | 38.5d | 0d |  | Chung | 1h |  | 400 |  |
| 26 | 1.4.2.1.4 | Validación de la primera iteración del circuito |  | 1h | 2018-03-13 19:00 | 2018-03-13 20:00 | 25 |  |  | 2018-03-16 20:00 | 2018-03-17 20:00 | 38.5d | 0d |  | Chung | 1h |  | 400 |  |

| ID | WBS | Task | Type | Duration | Start | Finish | Predecessors | Complete | Remaining | Baseline 1 start | Baseline 1 finish | Total slack | Free slack | Constraint | Resources | Work | Actual work | Cost | Actual cost |
| --- | --- | --- | --- | --- | --- | --- | --- | --- | --- | --- | --- | --- | --- | --- | --- | --- | --- | --- | --- |
| 27 | 1.4.2.2 | **Diseño HW del Miógrafo 2da iteración** |  | 0.75d | 2018-03-13 20:00 | 2018-03-14 19:00 |  |  |  | 2018-03-17 20:00 | 2018-03-19 19:00 | 38.5d |  |  |  | 3h |  | 1,200 |  |
| 28 | 1.4.2.2.1 | Correcciones errores |  | 1h | 2018-03-13 20:00 | 2018-03-13 21:00 | 26 |  |  | 2018-03-17 20:00 | 2018-03-17 21:00 | 38.5d | 0d |  | Chung | 1h |  | 400 |  |
| 29 | 1.4.2.2.2 | Corrección diseño eagle |  | 1h | 2018-03-14 17:00 | 2018-03-14 18:00 | 28 |  |  | 2018-03-19 17:00 | 2018-03-19 18:00 | 38.5d | 0d |  | Chung | 1h |  | 400 |  |
| 30 | 1.4.2.2.3 | corrección circuito en proto |  | 1h | 2018-03-14 18:00 | 2018-03-14 19:00 | 29 |  |  | 2018-03-19 18:00 | 2018-03-19 19:00 | 38.5d |  |  | Chung | 1h |  | 400 |  |
| 31 | 1.4.2.3 | **Diseño HW Instrumentación del Miógrafo 1er Iteración** |  | 0.62d | 2018-03-12 17:00 A | 2018-03-12 19:30 |  | 40% | 0.38d | 2018-03-15 17:00 | 2018-03-15 19:30 | 40.88d |  |  |  | 2.5h | 1h | 1,000 | 400 |
| 32 | 1.4.2.3.1 | Diseño del circuito |  | 0.5h | 2018-03-12 17:00 | 2018-03-12 17:30 | 17 |  |  | 2018-03-15 17:00 | 2018-03-15 17:30 | 41.38d |  |  | Gerardo | 0.5h |  | 200 |  |
| 33 | 1.4.2.3.2 | Agregar Diseño al proyecto de eagle |  | 1h | 2018-03-12 17:30 A | 2018-03-12 18:30 A | 32 | 100% |  | 2018-03-15 17:30 | 2018-03-15 18:30 |  |  |  | Gerardo | 1h | 1h | 400 | 400 |
| 34 | 1.4.2.3.3 | Probar diseño |  | 1h | 2018-03-12 18:30 | 2018-03-12 19:30 | 33 |  |  | 2018-03-15 18:30 | 2018-03-15 19:30 | 34.12d | 0d |  | Gerardo | 1h |  | 400 |  |
| 35 | 1.4.2.4 | **Diseño HW Instrumentación del Miógrafo 2da Iteración** |  | 6d | 2018-03-12 19:30 | 2018-03-19 17:30 |  |  |  | 2018-03-15 19:30 | 2018-03-22 17:30 | 34.12d |  |  |  | 24h |  | 9,600 |  |
| 36 | 1.4.2.4.1 | Corrección errores |  | 2d | 2018-03-12 19:30 | 2018-03-14 17:30 | 34 |  |  | 2018-03-15 19:30 | 2018-03-17 19:30 | 34.12d | 0d |  | Gerardo | 8h |  | 3,200 |  |
| 37 | 1.4.2.4.2 | Corrección diseño eagle |  | 2d | 2018-03-14 17:30 | 2018-03-16 17:30 | 36 |  |  | 2018-03-17 19:30 | 2018-03-20 17:30 | 34.12d | 0d |  | Gerardo | 8h |  | 3,200 |  |
| 38 | 1.4.2.4.3 | corrección de circuito en proto |  | 2d | 2018-03-16 17:30 | 2018-03-19 17:30 | 37 |  |  | 2018-03-20 17:30 | 2018-03-22 17:30 | 34.12d | 0d |  | Gerardo | 8h |  | 3,200 |  |
| 39 | 1.4.2.5 | **Integración diseños en proto 2** |  | 0.75d | 2018-03-19 17:30 | 2018-03-19 20:30 |  |  |  | 2018-03-22 17:30 | 2018-03-22 20:30 | 34.12d |  |  |  | 3h |  | 1,200 |  |
| 40 | 1.4.2.5.1 | Conexiones |  | 1h | 2018-03-19 17:30 | 2018-03-19 18:30 | 38 |  |  | 2018-03-22 17:30 | 2018-03-22 18:30 | 34.12d | 0d |  | Gerardo | 1h |  | 400 |  |
| 41 | 1.4.2.5.2 | Pruebas de integración |  | 2h | 2018-03-19 18:30 | 2018-03-19 20:30 | 40 |  |  | 2018-03-22 18:30 | 2018-03-22 20:30 | 34.12d |  |  | Gerardo | 2h |  | 800 |  |
| 42 | 1.4.2.6 | **PCB 1ra Iteración** |  | 2d | 2018-03-19 20:30 A | 2018-03-21 18:30 |  | 69% | 0.62d | 2018-03-22 20:30 | 2018-03-26 20:30 | 32.12d |  |  |  | 17.2h | 11h | 8,150 | 4,527 |
| 43 | 1.4.2.6.1 | Diseño del PCB Miógrafo |  | 2h | 2018-03-19 20:30 A | 2018-03-19 22:30 A | 41 | 100% |  | 2018-03-22 20:30 | 2018-03-23 18:30 |  |  |  | Chung | 2h | 2h | 800 | 800 |
| 44 | 1.4.2.6.2 | Diseño del PCB HW instrumentación |  | 2h | 2018-03-19 20:30 A | 2018-03-19 22:30 A | 41 | 100% |  | 2018-03-22 20:30 | 2018-03-23 18:30 |  |  |  | Gerardo | 2h | 2h | 800 | 800 |
| 45 | 1.4.2.6.3 | Construcción del PCB del miógrafo |  | 4h | 2018-03-19 22:30 A | 2018-03-20 20:30 | 43 | 20% | 3.2h | 2018-03-23 18:30 | 2018-03-24 18:30 | 32.62d |  |  | Chung; Material Miógrafo | 4h | 0.8h | 2,235 | 447 |
| 46 | 1.4.2.6.4 | Construcción del PCB HW de instrumentación |  | 4h | 2018-03-19 22:30 A | 2018-03-20 20:30 | 44 | 70% | 1.2h | 2018-03-23 18:30 | 2018-03-26 18:30 | 0.35d | 0d |  | Gerardo; David; Material HW de instrumentación de miografo | 5.2h | 2.8h | 2,715 | 1,120 |
| 47 | 1.4.2.6.5 | Validación del PCB del miógrafo |  | 2h | 2018-03-20 20:30 A | 2018-03-21 18:30 A | 45 | 100% |  | 2018-03-24 18:30 | 2018-03-24 20:30 |  |  |  | Chung | 2h | 2h | 800 | 800 |
| 48 | 1.4.2.6.6 | Validación del PCB del HW de instrumentación |  | 2h | 2018-03-20 20:30 A | 2018-03-21 18:30 | 46 | 70% | 0.6h | 2018-03-26 18:30 | 2018-03-26 20:30 | 1.88d | 0d |  | Gerardo | 2h | 1.4h | 800 | 560 |
| 49 | 1.4.3 | Actualización Arquitectura de HW Final |  | 2d? | 2018-03-21 18:30 | 2018-03-23 18:30 | 47, 48 |  |  | 2018-03-26 20:30 | 2018-03-28 18:30 | 1.88d | 0d |  | Chung; Gerardo | 16h |  | 6,400 |  |
| 50 | 1.4.4 | **SW** |  | 2d | 2018-03-10 17:00 A | 2018-03-12 21:00 A |  | 100% |  | 2018-03-12 17:00 | 2018-03-13 21:00 |  |  |  |  | 8h | 8h | 3,200 | 3,200 |
| 51 | 1.4.4.1 | **Migración de Codewarrior a MCU Expresso** |  | 2d | 2018-03-10 17:00 A | 2018-03-12 21:00 A |  | 100% |  | 2018-03-12 17:00 | 2018-03-13 21:00 |  |  |  |  | 8h | 8h | 3,200 | 3,200 |
| 52 | 1.4.4.1.1 | Adaptación de driver a MCU expresso | manual | 4h | 2018-03-10 17:00 A | 2018-03-10 21:00 A |  | 100% |  | 2018-03-12 17:00 | 2018-03-12 21:00 |  |  |  | Chung | 4h | 4h | 1,600 | 1,600 |
| 53 | 1.4.4.1.2 | Validación de cambios en los drivers | manual | 4h | 2018-03-12 17:00 A | 2018-03-12 21:00 A |  | 100% |  | 2018-03-13 17:00 | 2018-03-13 21:00 |  |  | start no earlier than 2018-03-12 17:00 | Chung | 4h | 4h | 1,600 | 1,600 |
| 54 | 1.4.5 | Entrega DEM1R | milestone | 0d | 2018-03-23 18:30 | 2018-03-23 18:30 | 49 |  |  | 2018-03-28 18:30 | 2018-03-28 18:30 | 2.88d | 0d |  |  |  |  |  |  |

| ID | WBS | Task | Type | Duration | Start | Finish | Predecessors | Baseline 1 start | Baseline 1 finish | Total slack | Free slack | Constraint | Deadline | Resources | Work | Cost |
| --- | --- | --- | --- | --- | --- | --- | --- | --- | --- | --- | --- | --- | --- | --- | --- | --- |
| 55 | 1.5 | **DEM2R: Segundo Entregable DEMO** |  | 19.25d | 2018-03-23 18:30 | 2018-04-13 17:30 |  | 2018-03-28 18:30 | 2018-04-17 17:30 | 1.88d |  |  |  |  | 90h | 36,000 |
| 56 | 1.5.1 | Escritura requerimientos de Sistema Entregable final |  | 2h | 2018-03-23 18:30 | 2018-03-23 20:30 | 54 | 2018-03-28 18:30 | 2018-03-28 20:30 | 2.88d | 0d |  |  | David; Chung; Gerardo | 6h | 2,400 |
| 57 | 1.5.2 | Arquitectura de SW entregable Final |  | 9h | 2018-03-23 20:30 | 2018-03-26 21:30 | 56 | 2018-03-28 20:30 | 2018-03-30 17:30 | 1.88d | 0d |  |  | Chung; Gerardo | 10h | 4,000 |
| 58 | 1.5.3 | **Actualización de casos de prueba** |  | 1d | 2018-03-26 21:30 | 2018-03-27 19:30 |  | 2018-03-30 17:30 | 2018-03-31 17:30 | 1.88d |  |  |  |  | 12h | 4,800 |
| 59 | 1.5.3.1 | Creación casos de prueba SW |  | 2h | 2018-03-26 21:30 | 2018-03-27 17:30 | 57 | 2018-03-30 17:30 | 2018-03-30 19:30 | 1.88d | 0d |  |  | David; Chung; Gerardo | 6h | 2,400 |
| 60 | 1.5.3.2 | Creación casos de prueba integración |  | 2h | 2018-03-27 17:30 | 2018-03-27 19:30 | 59 | 2018-03-30 19:30 | 2018-03-31 17:30 | 1.88d | 0d |  |  | David; Chung; Gerardo | 6h | 2,400 |
| 61 | 1.5.4 | Inicio del Desarrollo de SW | milestone | 0d | 2018-03-27 19:30 | 2018-03-27 19:30 | 60 | 2018-03-31 17:30 | 2018-03-31 17:30 | 1.88d | 0d |  |  |  |  |  |
| 62 | 1.5.5 | **Creación de la Aplicación Iteración 1** |  | 12d | 2018-03-27 19:30 | 2018-04-09 21:30 |  | 2018-03-31 17:30 | 2018-04-13 17:30 | 1.88d |  |  |  |  | 48h | 19,200 |
| 63 | 1.5.5.1 | Diseño de los SW componentes. |  | 8h | 2018-03-27 19:30 | 2018-03-29 19:30 | 61 | 2018-03-31 17:30 | 2018-04-02 21:30 | 1.88d | 0d |  |  | Chung | 8h | 3,200 |
| 64 | 1.5.5.2 | Implementación de los SW componentes |  | 20h | 2018-03-29 19:30 | 2018-04-04 17:30 | 63 | 2018-04-02 21:30 | 2018-04-07 19:30 | 1.88d | 0d |  |  | Chung | 20h | 8,000 |
| 65 | 1.5.5.3 | Pruebas de unidad de SW |  | 15h | 2018-04-04 17:30 | 2018-04-07 20:30 | 64 | 2018-04-07 19:30 | 2018-04-11 20:30 | 1.88d | 0d |  |  | Chung | 15h | 6,000 |
| 66 | 1.5.5.4 | Pruebas de Integración entre SW componentes |  | 5h | 2018-04-07 20:30 | 2018-04-09 21:30 | 65 | 2018-04-11 20:30 | 2018-04-13 17:30 | 1.88d | 0d |  |  | Chung | 5h | 2,000 |
| 67 | 1.5.6 | Pruebas de Integración HW/SW |  | 5h | 2018-04-09 21:30 | 2018-04-10 20:30 | 66 | 2018-04-13 17:30 | 2018-04-14 18:30 | 1.88d | 0d |  |  | Chung | 5h | 2,000 |
| 68 | 1.5.7 | **Creación de la Aplicación Iteración 2** |  | 2d | 2018-04-10 20:30 | 2018-04-12 20:30 |  | 2018-04-14 18:30 | 2018-04-16 22:30 | 1.88d |  |  |  |  | 8h | 3,200 |
| 69 | 1.5.7.1 | Diseño de los SW components. |  | 2h | 2018-04-10 20:30 | 2018-04-11 18:30 | 67 | 2018-04-14 18:30 | 2018-04-14 20:30 | 1.88d | 0d |  |  | Chung | 2h | 800 |
| 70 | 1.5.7.2 | Implementación de los SW components |  | 4h | 2018-04-11 18:30 | 2018-04-12 18:30 | 69 | 2018-04-14 20:30 | 2018-04-16 20:30 | 1.88d | 0d |  |  | Chung | 4h | 1,600 |
| 71 | 1.5.7.3 | Pruebas de unidad de SW |  | 1h | 2018-04-12 18:30 | 2018-04-12 19:30 | 70 | 2018-04-16 20:30 | 2018-04-16 21:30 | 1.88d | 0d |  |  | Chung | 1h | 400 |
| 72 | 1.5.7.4 | Pruebas de Integración entre SW components |  | 1h | 2018-04-12 19:30 | 2018-04-12 20:30 | 71 | 2018-04-16 21:30 | 2018-04-16 22:30 | 1.88d | 0d |  |  | Chung | 1h | 400 |
| 73 | 1.5.8 | Pruebas de Integración HW/SW |  | 1h | 2018-04-12 20:30 | 2018-04-13 17:30 | 72 | 2018-04-16 22:30 | 2018-04-17 17:30 | 1.88d | 0d |  |  | Chung | 1h | 400 |
| 74 | 1.5.9 | Validación de Sw completa | milestone | 0d | 2018-04-13 17:30 | 2018-04-13 17:30 | 73 | 2018-04-17 17:30 | 2018-04-17 17:30 | 1.88d |  |  |  |  |  |  |
| 75 | 1.6 | **Preparar Presentación Final** |  | 2.75d | 2018-03-27 19:30 | 2018-03-30 18:30 |  | 2018-03-31 17:30 | 2018-04-03 18:30 | 14.62d |  |  |  |  | 22h | 8,800 |
| 76 | 1.6.1 | Power Point Presentación final |  | 4h | 2018-03-27 19:30 | 2018-03-28 19:30 | 60 | 2018-03-31 17:30 | 2018-04-02 17:30 | 14.62d | 0d |  |  | David; Gerardo | 8h | 3,200 |
| 77 | 1.6.2 | Revisión de los documentos entregables |  | 5h | 2018-03-28 19:30 | 2018-03-29 20:30 | 76 | 2018-04-02 17:30 | 2018-04-02 22:30 | 14.62d | 0d |  |  | David; Gerardo | 10h | 4,000 |
| 78 | 1.6.3 | Ensayo de presentación final |  | 2h | 2018-03-29 20:30 | 2018-03-30 18:30 | 77 | 2018-04-02 22:30 | 2018-04-03 18:30 | 14.62d |  |  |  | David; Gerardo | 4h | 1,600 |
| 79 | 1.7 | Entrega del Proyecto | milestone | 0d | 2018-04-25 17:00 | 2018-04-25 17:00 | 78, 74 | 2018-04-25 17:00 | 2018-04-25 17:00 | -9d | 0d | start no earlier than 2018-04-25 17:00 | 2018-04-14 21:00 |  |  |  |
