# SwtichErgonomicoPlanRespaldo

Schedule from MS Project, 2018-03-20 to 2018-04-24, costs in $, A marks actual dates.
Continental AG

## Calendars

- Standard: Mon-Sun 08:00-12:00, 13:00-17:00.

## Resources

| Resource | Rate |
| --- | --- |
| David Bellomo | 400 |
| Chung | 400 |
| Gerardo | 400 |
| Material | 1000 |

## Schedule

| ID | WBS | Task | Type | Duration | Start | Finish | Predecessors | Complete | Baseline start | Baseline finish | Baseline duration | Constraint | Deadline | Resources | Work | Actual work | Cost | Actual cost |
| --- | --- | --- | --- | --- | --- | --- | --- | --- | --- | --- | --- | --- | --- | --- | --- | --- | --- | --- |
| 1 | 1 | Definir nuevo plan |  | 1h | 2018-03-20 08:00 A | 2018-03-20 09:00 A |  | 100% | 2018-03-20 08:00 | 2018-03-20 09:00 | 1h |  |  | David Bellomo | 1h | 1h | 400 | 400 |
| 2 | 2 | Prepar tarjeta de desarrollo |  | 1.5h | 2018-03-20 09:00 A | 2018-03-20 10:30 A | 1 | 100% | 2018-03-20 09:00 | 2018-03-20 10:30 | 1.5h |  |  | David Bellomo | 1.5h | 1.5h | 600 | 600 |
| 3 | 3 | Entder compotentes del electromiografo |  | 2h | 2018-03-20 10:30 A | 2018-03-20 13:30 A | 2 | 100% | 2018-03-20 10:30 | 2018-03-20 13:30 | 2h |  |  | David Bellomo | 2h | 2h | 800 | 800 |
| 4 | 4 | Comprar material primera parte |  | 0.2h | 2018-03-20 13:30 A | 2018-03-20 13:42 A | 3 | 100% | 2018-03-20 13:30 | 2018-03-20 13:42 | 0.2h |  |  | David Bellomo | 0.2h | 0.2h | 80 | 80 |
| 5 | 5 | Rescribir Requerimientos |  | 2h | 2018-03-21 08:00 A | 2018-03-21 10:00 A |  | 100% | 2018-03-21 08:00 | 2018-03-21 10:00 | 2h | start no earlier than 2018-03-21 08:00 |  | David Bellomo | 2h | 2h | 800 | 800 |
| 6 | 6 | Rediseñar Arquitectura de HW |  | 1h | 2018-03-21 10:00 A | 2018-03-21 11:00 A | 5 | 100% | 2018-03-21 10:00 | 2018-03-21 11:00 | 1h |  |  | David Bellomo | 1h | 1h | 400 | 400 |
| 7 | 7 | Resdiseñar Arquitectura de SW |  | 1h | 2018-03-21 11:00 A | 2018-03-21 12:00 A | 6 | 100% | 2018-03-21 11:00 | 2018-03-21 12:00 | 1h |  |  | David Bellomo | 1h | 1h | 400 | 400 |
| 8 | 8 | Definir nuevo BOM |  | 0.5h | 2018-03-21 13:00 A | 2018-03-21 13:30 A | 7 | 100% | 2018-03-21 13:00 | 2018-03-21 13:30 | 0.5h |  |  | David Bellomo | 0.5h | 0.5h | 200 | 200 |
| 9 | 9 | **SW sistema minimo** |  | 0.38d | 2018-03-21 13:30 A | 2018-03-21 16:30 A | 8 | 100% | 2018-03-21 14:30 | 2018-03-22 08:30 | 0.38d |  |  |  | 3h | 3h | 1,200 | 1,200 |
| 10 | 9.1 | Integrar Drivers |  | 2h | 2018-03-21 13:30 A | 2018-03-21 15:30 A | 8 | 100% | 2018-03-21 14:30 | 2018-03-21 16:30 | 2h | start no earlier than 2018-03-21 08:00 |  | David Bellomo | 2h | 2h | 800 | 800 |
| 11 | 9.2 | Integrar OS |  | 1h | 2018-03-21 15:30 A | 2018-03-21 16:30 A | 10 | 100% | 2018-03-21 16:30 | 2018-03-22 08:30 | 1h |  |  | David Bellomo | 1h | 1h | 400 | 400 |
| 12 | 9.3 | Sistema minimo terminado | milestone | 0d | 2018-03-21 16:30 A | 2018-03-21 16:30 A | 11 | 100% | 2018-03-22 08:30 | 2018-03-22 08:30 |  |  | 2018-03-22 17:00 |  |  |  |  |  |
| 13 | 10 | Recibir HW de envio con Electromiografo | milestone, manual | 0d | 2018-03-22 08:00 A | 2018-03-22 08:00 A | 8 | 100% | 2018-03-22 08:00 | 2018-03-22 08:00 |  | start no earlier than 2018-03-22 08:00 |  |  |  |  |  |  |
| 14 | 11 | Comprar material segunda parte |  | 1h | 2018-03-22 08:00 A | 2018-03-22 09:00 A | 13 | 100% | 2018-03-21 13:30 | 2018-03-21 14:30 | 1h |  |  | David Bellomo; Material | 1h | 1h | 1,400 | 1,400 |
| 15 | 12 | **Probar Electromiografo HW** |  | 0.56d | 2018-03-22 09:00 A | 2018-03-22 14:30 A |  | 100% | 2018-03-22 08:30 | 2018-03-22 14:00 | 0.56d |  |  |  | 4.5h | 4.5h | 1,800 | 1,800 |
| 16 | 12.1 | Medir Salida con osciloscopio |  | 1h | 2018-03-22 09:00 A | 2018-03-22 10:00 A | 12, 14 | 100% | 2018-03-22 08:30 | 2018-03-22 09:30 | 1h |  |  | David Bellomo | 1h | 1h | 400 | 400 |
| 17 | 12.2 | Entender Señal del electromiografo |  | 1.5h | 2018-03-22 10:00 A | 2018-03-22 11:30 A | 16 | 100% | 2018-03-22 09:30 | 2018-03-22 11:00 | 1.5h |  |  | David Bellomo | 1.5h | 1.5h | 600 | 600 |
| 18 | 12.3 | Identificar mejor lugar para medir señal |  | 2h | 2018-03-22 11:30 A | 2018-03-22 14:30 A | 17 | 100% | 2018-03-22 11:00 | 2018-03-22 14:00 | 2h |  |  | David Bellomo | 2h | 2h | 800 | 800 |
| 19 | 12.4 | Puntos de meidición identificados | milestone | 0d | 2018-03-22 14:30 A | 2018-03-22 14:30 A | 18 | 100% | 2018-03-22 14:00 | 2018-03-22 14:00 |  |  |  |  |  |  |  |  |
| 20 | 13 | **Prepar Hw de muestreo de Audio** |  | 0.88d | 2018-03-22 14:30 A | 2018-03-23 13:30 A |  | 100% | 2018-03-24 08:00 | 2018-03-24 16:00 | 0.88d |  |  |  | 7h | 7h | 2,800 | 2,800 |
| 21 | 13.1 | Ensablar circuito |  | 3h | 2018-03-22 14:30 A | 2018-03-23 08:30 A | 19 | 100% | 2018-03-24 08:00 | 2018-03-24 11:00 | 3h |  |  | David Bellomo | 3h | 3h | 1,200 | 1,200 |
| 22 | 13.2 | Probar circuito |  | 4h | 2018-03-23 08:30 A | 2018-03-23 13:30 A | 21 | 100% | 2018-03-24 11:00 | 2018-03-24 16:00 | 4h |  |  | David Bellomo | 4h | 4h | 1,600 | 1,600 |
| 23 | 13.3 | HW de muestreo terminado | milestone | 0d | 2018-03-23 13:30 A | 2018-03-23 13:30 A | 22 | 100% | 2018-03-24 16:00 | 2018-03-24 16:00 |  |  | 2018-03-25 17:00 | David Bellomo |  |  |  |  |
| 24 | 14 | **Preparar HW de salida de Audio** |  | 1d | 2018-03-23 13:30 A | 2018-03-24 13:30 A |  | 100% | 2018-03-25 16:00 | 2018-03-26 16:00 | 1d |  |  |  | 8h | 8h | 3,200 | 3,200 |
| 25 | 14.1 | Ensamblar circuito |  | 3h | 2018-03-23 13:30 A | 2018-03-23 16:30 A | 23 | 100% | 2018-03-25 16:00 | 2018-03-26 10:00 | 3h |  |  | David Bellomo | 3h | 3h | 1,200 | 1,200 |
| 26 | 14.2 | probar circuito |  | 5h | 2018-03-23 16:30 A | 2018-03-24 13:30 A | 25 | 100% | 2018-03-26 10:00 | 2018-03-26 16:00 | 5h |  |  | David Bellomo | 5h | 5h | 2,000 | 2,000 |
| 27 | 14.3 | HW de salida de audio terminado | milestone | 0d | 2018-03-24 13:30 A | 2018-03-24 13:30 A | 26 | 100% | 2018-03-26 16:00 | 2018-03-26 16:00 |  |  | 2018-03-25 17:00 |  |  |  |  |  |

| ID | WBS | Task | Type | Duration | Start | Finish | Predecessors | Complete | Remaining | Baseline start | Baseline finish | Baseline duration | Total slack | Deadline | Resources | Work | Actual work | Cost | Actual cost |
| --- | --- | --- | --- | --- | --- | --- | --- | --- | --- | --- | --- | --- | --- | --- | --- | --- | --- | --- | --- |
| 28 | 15 | **Preparar SW de distorción** |  | 1.12d | 2018-03-24 13:30 A | 2018-03-25 14:30 A |  | 100% |  | 2018-03-27 15:00 | 2018-03-28 16:00 | 1.12d |  |  |  | 9h | 9h | 3,600 | 3,600 |
| 29 | 15.1 | Integar SW de muestreo con el de salida de audio |  | 3h | 2018-03-24 13:30 A | 2018-03-24 16:30 A | 27 | 100% |  | 2018-03-27 15:00 | 2018-03-28 09:00 | 3h |  |  | David Bellomo | 3h | 3h | 1,200 | 1,200 |
| 30 | 15.2 | Escribir una distorción de audio |  | 3h | 2018-03-24 16:30 A | 2018-03-25 10:30 A | 29 | 100% |  | 2018-03-28 09:00 | 2018-03-28 12:00 | 3h |  |  | David Bellomo | 3h | 3h | 1,200 | 1,200 |
| 31 | 15.3 | Probar activación y desactivación del SW de distorción |  | 3h | 2018-03-25 10:30 A | 2018-03-25 14:30 A | 30 | 100% |  | 2018-03-28 13:00 | 2018-03-28 16:00 | 3h |  |  | David Bellomo | 3h | 3h | 1,200 | 1,200 |
| 32 | 15.4 | SW de distoricion integrado y probado | milestone | 0d | 2018-03-25 14:30 A | 2018-03-25 14:30 A | 31 | 100% |  | 2018-03-28 16:00 | 2018-03-28 16:00 |  |  | 2018-03-25 17:00 |  |  |  |  |  |
| 33 | 16 | **Prepar SW de medición del electromiografo** |  | 2.38d | 2018-03-25 14:30 A | 2018-03-28 08:30 A |  | 100% |  | 2018-03-22 14:00 | 2018-03-23 17:00 | 1.38d |  |  |  | 9h | 9h | 3,600 | 3,600 |
| 34 | 16.1 | Escribir SW de muestreo del electromiografo |  | 10.5h | 2018-03-25 14:30 A | 2018-03-26 17:30 A | 32 | 100% |  | 2018-03-22 14:00 | 2018-03-22 17:00 | 3h |  |  | David Bellomo | 3h | 3h | 1,200 | 1,200 |
| 35 | 16.2 | Escribir SW de detección del movimiento |  | 5.5h | 2018-03-26 17:30 A | 2018-03-27 14:30 A | 34 | 100% |  | 2018-03-23 08:00 | 2018-03-23 11:00 | 3h |  |  | David Bellomo | 3h | 3h | 1,200 | 1,200 |
| 36 | 16.3 | Probar SW de detección del electromiografo |  | 3h | 2018-03-27 14:30 A | 2018-03-28 08:30 A | 35 | 100% |  | 2018-03-23 11:00 | 2018-03-23 17:00 | 5h |  |  | David Bellomo | 3h | 3h | 1,200 | 1,200 |
| 37 | 17 | SW de detección de movimiento terminado | milestone | 0d | 2018-03-28 08:30 A | 2018-03-28 08:30 A | 36 | 100% |  | 2018-03-23 17:00 | 2018-03-23 17:00 |  |  |  | David Bellomo |  |  |  |  |
| 38 | 18 | **Integargración del sistema** |  | 1d | 2018-03-28 08:30 A | 2018-03-29 08:30 A |  | 100% |  | 2018-03-28 16:00 | 2018-03-29 14:00 | 0.75d |  |  |  | 8h | 8h | 3,200 | 3,200 |
| 39 | 18.1 | Integrar SW de muestreo y salida de audio con deteccion de movimiento |  | 4h | 2018-03-28 08:30 A | 2018-03-28 13:30 A | 37 | 100% |  | 2018-03-28 16:00 | 2018-03-29 09:00 | 2h |  |  | David Bellomo | 4h | 4h | 1,600 | 1,600 |
| 40 | 18.2 | Pruebas de integración |  | 4h | 2018-03-28 13:30 A | 2018-03-29 08:30 A | 39 | 100% |  | 2018-03-29 09:00 | 2018-03-29 14:00 | 4h |  |  | David Bellomo | 4h | 4h | 1,600 | 1,600 |
| 41 | 19 | Sistema integrado y probado | milestone | 0d | 2018-03-29 08:30 A | 2018-03-29 08:30 A | 40 | 100% |  | 2018-03-29 14:00 | 2018-03-29 14:00 |  |  |  |  |  |  |  |  |
| 42 | 20 | Inicio del proceso de documentación y elaboración de la presentación | milestone | 0d | 2018-03-29 08:30 A | 2018-03-29 08:30 A | 41 | 100% |  | 2018-03-29 14:00 | 2018-03-29 14:00 |  |  |  |  |  |  |  |  |
| 43 | 21 | **Plan ALPHA BETA integration** |  | 36d | 2018-03-20 08:00 A | 2018-04-24 17:00 |  | 94% | 2.19d |  |  |  | 0d |  |  | 131h | 116.6h | 52,400 | 46,640 |
| 44 | 21.1 | Creación Proyecto Git Hub |  | 7h | 2018-03-29 08:30 A | 2018-03-29 16:30 A | 41 | 100% |  |  |  |  |  |  | David Bellomo | 7h | 7h | 2,800 | 2,800 |
| 45 | 21.2 | **Integración de HWs** |  | 1d | 2018-03-29 16:30 A | 2018-03-30 16:30 A |  | 100% |  |  |  |  |  |  |  | 8h | 8h | 3,200 | 3,200 |
| 46 | 21.2.1 | Integrar HW de instrumentación de Ofsset |  | 4h | 2018-03-29 16:30 A | 2018-03-30 11:30 A | 44 | 100% |  |  |  |  |  |  | David Bellomo | 4h | 4h | 1,600 | 1,600 |
| 47 | 21.2.2 | Integrar HW de Miografo 3rd Party |  | 4h | 2018-03-30 11:30 A | 2018-03-30 16:30 A | 46 | 100% |  |  |  |  |  |  | David Bellomo | 4h | 4h | 1,600 | 1,600 |
| 48 | 21.3 | **Prepar SW de muestreo de Audio** |  | 1.62d | 2018-03-30 16:30 A | 2018-04-01 13:30 A |  | 100% |  | 2018-03-24 16:00 | 2018-03-25 16:00 | 1d |  |  |  | 13h | 13h | 5,200 | 5,200 |
| 49 | 21.3.1 | Desarrollar Codigo de muestreo de Audio |  | 6h | 2018-03-30 16:30 A | 2018-03-31 14:30 A | 47 | 100% |  | 2018-03-24 16:00 | 2018-03-25 10:00 | 3h |  |  | David Bellomo | 6h | 6h | 2,400 | 2,400 |
| 50 | 21.3.2 | Probar codigo de muestreo de audio |  | 7h | 2018-03-31 14:30 A | 2018-04-01 13:30 A | 49 | 100% |  | 2018-03-25 10:00 | 2018-03-25 16:00 | 5h |  |  | David Bellomo | 7h | 7h | 2,800 | 2,800 |
| 51 | 21.3.3 | SW inicial de muestreo terminado | milestone | 0d | 2018-04-01 13:30 A | 2018-04-01 13:30 A | 50 | 100% |  | 2018-03-25 16:00 | 2018-03-25 16:00 |  |  |  | David Bellomo |  |  |  |  |

| ID | WBS | Task | Type | Duration | Start | Finish | Predecessors | Complete | Remaining | Baseline start | Baseline finish | Baseline duration | Total slack | Constraint | Resources | Work | Actual work | Cost | Actual cost |
| --- | --- | --- | --- | --- | --- | --- | --- | --- | --- | --- | --- | --- | --- | --- | --- | --- | --- | --- | --- |
| 52 | 21.4 | **Preparar SW de salida de Audio** |  | 1.75d | 2018-04-01 13:30 A | 2018-04-03 10:30 A |  | 100% |  | 2018-03-26 16:00 | 2018-03-27 15:00 | 0.88d |  |  |  | 11h | 11h | 4,400 | 4,400 |
| 53 | 21.4.1 | Desarrollar SW de control de Audio |  | 4h | 2018-04-01 13:30 A | 2018-04-02 08:30 A | 51 | 100% |  |  |  |  |  |  | David Bellomo | 3.5h | 3.5h | 1,400 | 1,400 |
| 54 | 21.4.2 | Integrar SW de efectos de sonido |  | 3h | 2018-04-02 08:30 A | 2018-04-02 11:30 A | 53 | 100% |  |  |  |  |  |  | David Bellomo |  |  |  |  |
| 55 | 21.4.3 | Validar SW de salida de audio |  | 7h | 2018-04-02 11:30 A | 2018-04-03 10:30 A | 54 | 100% |  |  |  |  |  |  | David Bellomo | 7.5h | 7.5h | 3,000 | 3,000 |
| 56 | 21.5 | **Integración SW final** |  | 1d | 2018-04-03 10:30 A | 2018-04-04 10:30 A |  | 100% |  |  |  |  |  |  |  | 8h | 8h | 3,200 | 3,200 |
| 57 | 21.5.1 | Integrar SW de Control de Miógrafo con SW de control de audio |  | 3h | 2018-04-03 10:30 A | 2018-04-03 14:30 A | 55 | 100% |  |  |  |  |  |  | David Bellomo | 3h | 3h | 1,200 | 1,200 |
| 58 | 21.5.2 | Validar Integración con audio de Celular |  | 5h | 2018-04-03 14:30 A | 2018-04-04 10:30 A | 57 | 100% |  |  |  |  |  |  | David Bellomo | 5h | 5h | 2,000 | 2,000 |
| 59 | 21.6 | **Validación con Guitarra** |  | 0.62d | 2018-04-18 11:00 A | 2018-04-18 17:00 A |  | 100% |  |  |  |  |  |  |  | 15h | 15h | 6,000 | 6,000 |
| 60 | 21.6.1 | Validar la integración del sistema con el uso de una guitarra |  | 5h | 2018-04-18 11:00 A | 2018-04-18 17:00 A |  | 100% |  |  |  |  |  | finish no earlier than 2018-04-18 17:00 | David Bellomo; Chung; Gerardo | 15h | 15h | 6,000 | 6,000 |
| 61 | 21.7 | Elaboración de la Documentación y Presentación |  | 24h | 2018-04-22 08:00 A | 2018-04-24 17:00 | 42, 58 | 80% | 4.8h |  |  |  | 0d | finish no earlier than 2018-04-24 17:00 | Chung; David Bellomo; Gerardo | 69h | 54.6h | 27,600 | 21,840 |
| 62 | 21.8 | Final del Proyecto | milestone | 0d | 2018-03-20 08:00 A | 2018-03-20 08:00 A |  | 100% |  |  |  |  |  |  |  |  |  |  |  |
