# SwtichErgonomicoPlan3

Schedule from MS Project, 2018-03-20 to 2018-03-29, A marks actual dates.
Continental AG

## Calendars

- Standard: Mon-Sun 08:00-12:00, 13:00-17:00.

## Resources

| Resource |
| --- |
| David Bellomo |
| 9 |
| D |

## Schedule

| ID | WBS | Task | Type | Duration | Start | Finish | Predecessors | Complete | Remaining | Baseline start | Baseline finish | Baseline duration | Total slack | Free slack | Constraint | Deadline | Resources | Work | Actual work |
| --- | --- | --- | --- | --- | --- | --- | --- | --- | --- | --- | --- | --- | --- | --- | --- | --- | --- | --- | --- |
| 1 | 1 | Definir nuevo plan |  | 1h | 2018-03-20 08:00 A | 2018-03-20 09:00 A |  | 100% |  | 2018-03-20 08:00 | 2018-03-20 09:00 | 1h |  |  |  |  | David Bellomo | 1h | 1h |
| 2 | 2 | Prepar tarjeta de desarrollo |  | 1.5h | 2018-03-20 09:00 A | 2018-03-20 10:30 A | 1 | 100% |  | 2018-03-20 09:00 | 2018-03-20 10:30 | 1.5h |  |  |  |  | David Bellomo | 1.5h | 1.5h |
| 3 | 3 | Entder compotentes del electromiografo |  | 2h | 2018-03-20 10:30 A | 2018-03-20 13:30 A | 2 | 100% |  | 2018-03-20 10:30 | 2018-03-20 13:30 | 2h |  |  |  |  | David Bellomo | 2h | 2h |
| 4 | 4 | Comprar material primera parte |  | 0.2h | 2018-03-20 13:30 A | 2018-03-20 13:42 A | 3 | 100% |  | 2018-03-20 13:30 | 2018-03-20 13:42 | 0.2h |  |  |  |  | David Bellomo | 0.2h | 0.2h |
| 5 | 5 | Rescribir Requerimientos |  | 2h | 2018-03-21 08:00 A | 2018-03-21 10:00 A |  | 100% |  | 2018-03-21 08:00 | 2018-03-21 10:00 | 2h |  |  | start no earlier than 2018-03-21 08:00 |  | David Bellomo | 2h | 2h |
| 6 | 6 | Rediseñar Arquitectura de HW |  | 1h | 2018-03-21 10:00 A | 2018-03-21 11:00 A | 5 | 100% |  | 2018-03-21 10:00 | 2018-03-21 11:00 | 1h |  |  |  |  | David Bellomo | 1h | 1h |
| 7 | 7 | Resdiseñar Arquitectura de SW |  | 1h | 2018-03-21 11:00 A | 2018-03-21 12:00 | 6 | 70% | 0.3h | 2018-03-21 11:00 | 2018-03-21 12:00 | 1h | 8.12d |  |  |  | David Bellomo | 1h | 0.7h |
| 8 | 8 | Definir nuevo BOM |  | 0.5h | 2018-03-21 13:00 A | 2018-03-21 13:30 A | 7 | 100% |  | 2018-03-21 13:00 | 2018-03-21 13:30 | 0.5h |  |  |  |  | David Bellomo | 0.5h | 0.5h |
| 9 | 9 | Comprar material segunda parte |  | 1h | 2018-03-21 13:30 A | 2018-03-21 14:30 A | 8 | 100% |  | 2018-03-21 13:30 | 2018-03-21 14:30 | 1h |  |  |  |  | David Bellomo | 1h | 1h |
| 10 | 10 | **Prepar Hw de muestreo de Audio** |  | 0.88d | 2018-03-24 08:00 A | 2018-03-24 16:00 A |  | 100% |  | 2018-03-24 08:00 | 2018-03-24 16:00 | 0.88d |  |  |  |  |  | 7h | 7h |
| 11 | 10.1 | Ensablar circuito |  | 3h | 2018-03-24 08:00 A | 2018-03-24 11:00 A | 9, 17, 45 | 100% |  | 2018-03-24 08:00 | 2018-03-24 11:00 | 3h |  |  |  |  | David Bellomo | 3h | 3h |
| 12 | 10.2 | Probar circuito |  | 4h | 2018-03-24 11:00 A | 2018-03-24 16:00 A | 11 | 100% |  | 2018-03-24 11:00 | 2018-03-24 16:00 | 4h |  |  |  |  | David Bellomo | 4h | 4h |
| 13 | 11 | HW de muestreo terminado | milestone | 0d | 2018-03-24 16:00 A | 2018-03-24 16:00 A | 12 | 100% |  | 2018-03-24 16:00 | 2018-03-24 16:00 |  |  |  |  | 2018-03-25 17:00 |  |  |  |
| 14 | 12 | **SW sistema minimo** |  | 0.38d | 2018-03-21 14:30 A | 2018-03-22 08:30 A |  | 100% |  | 2018-03-21 14:30 | 2018-03-22 08:30 | 0.38d |  |  |  |  |  | 3h | 3h |
| 15 | 12.1 | Integrar Drivers |  | 2h | 2018-03-21 14:30 A | 2018-03-21 16:30 A | 9 | 100% |  | 2018-03-21 14:30 | 2018-03-21 16:30 | 2h |  |  | start no earlier than 2018-03-21 08:00 |  | David Bellomo | 2h | 2h |
| 16 | 12.2 | Integrar OS |  | 1h | 2018-03-21 16:30 A | 2018-03-22 08:30 A | 15 | 100% |  | 2018-03-21 16:30 | 2018-03-22 08:30 | 1h |  |  |  |  | David Bellomo | 1h | 1h |
| 17 | 13 | Sistema minimo terminado | milestone | 0d | 2018-03-22 08:30 A | 2018-03-22 08:30 A | 16 | 100% |  | 2018-03-22 08:30 | 2018-03-22 08:30 |  |  |  |  | 2018-03-22 17:00 |  |  |  |
| 18 | 14 | **Prepar SW de control** |  | 1d | 2018-03-24 16:00 | 2018-03-25 16:00 |  |  |  | 2018-03-24 16:00 | 2018-03-25 16:00 | 1d | -2.88d | 0d |  |  |  | 8h |  |
| 19 | 14.1 | Desarrollar Codigo de muestreo de Audio |  | 3h | 2018-03-24 16:00 | 2018-03-25 10:00 | 13, 17 |  |  | 2018-03-24 16:00 | 2018-03-25 10:00 | 3h | -2.88d | 0d |  |  | David Bellomo | 3h |  |
| 20 | 14.2 | Probar codigo de muestreo de audio |  | 5h | 2018-03-25 10:00 | 2018-03-25 16:00 | 19 |  |  | 2018-03-25 10:00 | 2018-03-25 16:00 | 5h | -2.88d | 0d |  |  | David Bellomo | 5h |  |
| 21 | 15 | SW inicial de muestreo terminado | milestone | 0d | 2018-03-25 16:00 | 2018-03-25 16:00 | 20 |  |  | 2018-03-25 16:00 | 2018-03-25 16:00 |  | -2.88d | 0d |  | 2018-03-25 17:00 |  |  |  |
| 22 | 16 | **Preparar HW de salida de Audio** |  | 1d | 2018-03-25 16:00 | 2018-03-26 16:00 |  |  |  | 2018-03-25 16:00 | 2018-03-26 16:00 | 1d | -2.88d | 0d |  |  |  | 8h |  |
| 23 | 16.1 | Ensablar circuito |  | 3h | 2018-03-25 16:00 | 2018-03-26 10:00 | 9, 21 |  |  | 2018-03-25 16:00 | 2018-03-26 10:00 | 3h | -2.88d | 0d |  |  | David Bellomo | 3h |  |
| 24 | 16.2 | probar circuito |  | 5h | 2018-03-26 10:00 | 2018-03-26 16:00 | 23 |  |  | 2018-03-26 10:00 | 2018-03-26 16:00 | 5h | -2.88d | 0d |  |  | David Bellomo | 5h |  |
| 25 | 16.3 | HW de salida de audio terminado | milestone | 0d | 2018-03-26 16:00 | 2018-03-26 16:00 | 24 |  |  | 2018-03-26 16:00 | 2018-03-26 16:00 |  | -2.88d | 0d |  | 2018-03-25 17:00 |  |  |  |

| ID | WBS | Task | Type | Duration | Start | Finish | Predecessors | Complete | Baseline start | Baseline finish | Baseline duration | Total slack | Free slack | Constraint | Deadline | Resources | Work | Actual work |
| --- | --- | --- | --- | --- | --- | --- | --- | --- | --- | --- | --- | --- | --- | --- | --- | --- | --- | --- |
| 26 | 17 | **Preparar SW de salida de Audio** |  | 0.88d | 2018-03-26 16:00 | 2018-03-27 15:00 |  |  | 2018-03-26 16:00 | 2018-03-27 15:00 | 0.88d | -2.88d | 0d |  |  |  | 7h |  |
| 27 | 17.1 | Escribir SW de salida de audio |  | 3h | 2018-03-26 16:00 | 2018-03-27 10:00 | 25 |  | 2018-03-26 16:00 | 2018-03-27 10:00 | 3h | -2.88d | 0d |  |  | David Bellomo | 3h |  |
| 28 | 17.2 | Probar SW de salida de audio |  | 4h | 2018-03-27 10:00 | 2018-03-27 15:00 | 27 |  | 2018-03-27 10:00 | 2018-03-27 15:00 | 4h | -2.88d | 0d |  |  | David Bellomo | 4h |  |
| 29 | 18 | SW de salida de Audio terminado | milestone | 0d | 2018-03-27 15:00 | 2018-03-27 15:00 | 28 |  | 2018-03-27 15:00 | 2018-03-27 15:00 |  | -2.88d | 0d |  | 2018-03-25 17:00 |  |  |  |
| 30 | 19 | **Preparar SW de distorción** |  | 1.12d | 2018-03-27 15:00 | 2018-03-28 16:00 |  |  | 2018-03-27 15:00 | 2018-03-28 16:00 | 1.12d | -2.88d | 0d |  |  |  | 9h |  |
| 31 | 19.1 | Integar SW de muestreo con el de salida de audio |  | 3h | 2018-03-27 15:00 | 2018-03-28 09:00 | 29, 21 |  | 2018-03-27 15:00 | 2018-03-28 09:00 | 3h | -2.88d | 0d |  |  | David Bellomo | 3h |  |
| 32 | 19.2 | Escribir una distorción de audio |  | 3h | 2018-03-28 09:00 | 2018-03-28 12:00 | 31 |  | 2018-03-28 09:00 | 2018-03-28 12:00 | 3h | -2.88d | 0d |  |  | David Bellomo | 3h |  |
| 33 | 19.3 | Probar activación y desactivación del SW de distorción |  | 3h | 2018-03-28 13:00 | 2018-03-28 16:00 | 32 |  | 2018-03-28 13:00 | 2018-03-28 16:00 | 3h | -2.88d | 0d |  |  | David Bellomo | 3h |  |
| 34 | 19.4 | SW de distoricion integrado y probado | milestone | 0d | 2018-03-28 16:00 | 2018-03-28 16:00 | 33 |  | 2018-03-28 16:00 | 2018-03-28 16:00 |  | -2.88d | 0d |  | 2018-03-25 17:00 |  |  |  |
| 35 | 20 | Recibir HW de envio con Electromiografo | milestone | 0d | 2018-03-22 08:00 A | 2018-03-22 08:00 A |  | 100% | 2018-03-22 08:00 | 2018-03-22 08:00 |  |  |  | start no earlier than 2018-03-22 08:00 |  |  |  |  |
| 36 | 21 | **Probar Electromiografo HW** |  | 0.56d | 2018-03-22 08:30 A | 2018-03-22 14:00 A |  | 100% | 2018-03-22 08:30 | 2018-03-22 14:00 | 0.56d |  |  |  |  |  | 4.5h | 4.5h |
| 37 | 21.1 | Medir Salida con osciloscopio |  | 1h | 2018-03-22 08:30 A | 2018-03-22 09:30 A | 35, 17 | 100% | 2018-03-22 08:30 | 2018-03-22 09:30 | 1h |  |  |  |  | David Bellomo | 1h | 1h |
| 38 | 21.2 | Entender Señal del electromiografo |  | 1.5h | 2018-03-22 09:30 A | 2018-03-22 11:00 A | 37 | 100% | 2018-03-22 09:30 | 2018-03-22 11:00 | 1.5h |  |  |  |  | David Bellomo | 1.5h | 1.5h |
| 39 | 21.3 | Identificar mejor lugar para medir señal |  | 2h | 2018-03-22 11:00 A | 2018-03-22 14:00 A | 38 | 100% | 2018-03-22 11:00 | 2018-03-22 14:00 | 2h |  |  |  |  | David Bellomo | 2h | 2h |
| 40 | 22 | Puntos de meidición identificados | milestone | 0d | 2018-03-22 14:00 A | 2018-03-22 14:00 A | 39 | 100% | 2018-03-22 14:00 | 2018-03-22 14:00 |  |  |  |  |  |  |  |  |
| 41 | 23 | **Prepar SW de medición del electromiografo** |  | 1.38d | 2018-03-22 14:00 | 2018-03-23 17:00 |  |  | 2018-03-22 14:00 | 2018-03-23 17:00 | 1.38d | 4.88d |  |  |  |  | 11h |  |
| 42 | 23.1 | Escribir SW de muestreo del electromiografo |  | 3h | 2018-03-22 14:00 | 2018-03-22 17:00 | 40 |  | 2018-03-22 14:00 | 2018-03-22 17:00 | 3h | 4.88d | 0d |  |  | David Bellomo | 3h |  |
| 43 | 23.2 | Escribir SW de detección del movimiento |  | 3h | 2018-03-23 08:00 | 2018-03-23 11:00 | 42 |  | 2018-03-23 08:00 | 2018-03-23 11:00 | 3h | 4.88d | 0d |  |  | David Bellomo | 3h |  |
| 44 | 23.3 | Probar SW de detección del electromiografo |  | 5h | 2018-03-23 11:00 | 2018-03-23 17:00 | 43 |  | 2018-03-23 11:00 | 2018-03-23 17:00 | 5h | 4.88d | 0d |  |  | David Bellomo | 5h |  |
| 45 | 24 | SW de detección de movimiento terminado | milestone | 0d | 2018-03-23 17:00 | 2018-03-23 17:00 | 44 |  | 2018-03-23 17:00 | 2018-03-23 17:00 |  | 4.88d |  |  |  | David Bellomo |  |  |
| 46 | 25 | **Integargración del sistema** |  | 0.75d | 2018-03-28 16:00 | 2018-03-29 14:00 |  |  | 2018-03-28 16:00 | 2018-03-29 14:00 | 0.75d | 0d |  |  |  |  | 6h |  |
| 47 | 25.1 | Integrar SW de muestreo y salida de audio con deteccion de movimiento |  | 2h | 2018-03-28 16:00 | 2018-03-29 09:00 | 45, 34 |  | 2018-03-28 16:00 | 2018-03-29 09:00 | 2h | 0d |  |  |  | David Bellomo | 2h |  |
| 48 | 25.2 | Pruebas de integración |  | 4h | 2018-03-29 09:00 | 2018-03-29 14:00 | 47 |  | 2018-03-29 09:00 | 2018-03-29 14:00 | 4h | 0d |  |  |  | David Bellomo | 4h |  |
| 49 | 26 | Sistema integrado y probado | milestone | 0d | 2018-03-29 14:00 | 2018-03-29 14:00 | 48 |  | 2018-03-29 14:00 | 2018-03-29 14:00 |  | 0d |  |  |  |  |  |  |
| 50 | 27 | Documentar y preprar presentacion | milestone | 0d | 2018-03-29 14:00 | 2018-03-29 14:00 | 49 |  | 2018-03-29 14:00 | 2018-03-29 14:00 |  | 0d |  |  |  |  |  |  |
